# ST - Main Plan

Schedule from ProjectLibre, 2019-08-26 to 2019-11-18.

## Calendars

- Standard: Mon-Fri 08:00-12:00, 13:00-17:00; Sat-Sun off. Exceptions (off unless hours are given): 2019-09-02.

## Resources

| Resource |
| --- |
| Unassigned |
| MAB |
| MYA |
| AYZ |
| HMA |
| RHA |
| MIS |
| AKH |
| AYO |
| FAB |
| ZMO |

## Schedule

| ID | WBS | Task | Duration | Start | Finish | Predecessors | Constraint | Resources |
| --- | --- | --- | --- | --- | --- | --- | --- | --- |
| 1 | 1 | **Iteration 1** | 6000e% | 2019-08-26 | 2019-11-18 |  |  |  |
| 2 | 1.1 | **Customer File** | 5100e% | 2019-08-26 | 2019-11-05 |  |  |  |
| 3 | 1.1.1 | Update Customer Address As per SOM | 300e% | 2019-08-26 | 2019-08-28 |  |  | MAB |
| 4 | 1.1.2 | Close customer file after any update | 300e% | 2019-08-26 | 2019-08-28 |  |  | MAB |
| 5 | 1.1.3 | Make sure everything is added to customer update | 300e% | 2019-08-26 | 2019-08-28 |  |  | MAB |
| 6 | 1.1.4 | Update all orders to save process instance ids | 300e% | 2019-08-26 | 2019-08-28 |  |  | MYA |
| 7 | 1.1.5 | Show on hold contract in Grid - Open them and Actions is disabled | 100e% | 2019-08-27 | 2019-08-27 |  | start no earlier than 2019-08-27 | AYZ |
| 8 | 1.1.6 | Customer Search - Implement all cases of search | 300e% | 2019-11-01 | 2019-11-05 | 14 |  | HMA |
| 9 | 1.2 | **Telephony** | 4800e% | 2019-08-26 | 2019-10-31 |  |  |  |
| 10 | 1.2.1 | Update the menu for blocking - Unblocking Contract | 100e% | 2019-08-27 | 2019-08-27 |  | start no earlier than 2019-08-27 | HMA |
| 11 | 1.2.2 | Update the Telephony and Change Phone Number to Use the new catalog | 200e% | 2019-08-26 | 2019-08-27 |  |  | MAB |
| 12 | 1.2.3 | Update Contract Address | 100e% | 2019-08-29 | 2019-08-29 | 5 | start no earlier than 2019-08-27 | MAB |
| 13 | 1.2.4 | Suspend from Customer care request | 100e% | 2019-08-28 | 2019-08-28 | 10 |  | HMA |
| 14 | 1.2.5 | Implement Parameters for VAS | 300e% | 2019-10-29 | 2019-10-31 | 77 |  | HMA |
| 15 | 1.2.6 | Implement Telephony No Cabling | 300e% | 2019-08-29 | 2019-09-03 | 13 |  | HMA |
| 16 | 1.3 | **XDSL** | 1900e% | 2019-08-26 | 2019-09-20 |  |  |  |
| 17 | 1.3.1 | Creation of contract on BSCS | 300e% | 2019-08-26 | 2019-08-28 |  |  | RHA |
| 18 | 1.3.2 | ADSL Subscription Request | 200e% | 2019-08-30 | 2019-09-03 | 12, 17 |  | MAB |
| 19 | 1.3.3 | ADSL Reset Password | 100e% | 2019-09-04 | 2019-09-04 | 18 | start no earlier than 2019-09-04 | MAB |
| 20 | 1.3.4 | ADSL Alter Speed | 100e% | 2019-09-05 | 2019-09-05 | 19 |  | MAB |
| 21 | 1.3.5 | ADSL Termination | 100e% | 2019-09-06 | 2019-09-06 | 20 |  | MAB |
| 22 | 1.3.6 | ADSL Line Moving | 100e% | 2019-09-10 | 2019-09-10 | 21 | start no earlier than 2019-09-10 | MAB |
| 23 | 1.3.7 | Contract Take Over | 100e% | 2019-09-11 | 2019-09-11 | 22 |  | MAB |
| 24 | 1.3.8 | GHDSL subscription | 200e% | 2019-09-12 | 2019-09-13 | 23 |  | MAB |
| 25 | 1.3.9 | Test ADSL as overall | 300e% | 2019-09-16 | 2019-09-18 | 24 |  | MAB |
| 26 | 1.3.10 | Deliver ADSL in a version | 200e% | 2019-09-19 | 2019-09-20 | 25 |  | MIS |

| ID | WBS | Task | Duration | Start | Finish | Predecessors | Constraint | Resources |
| --- | --- | --- | --- | --- | --- | --- | --- | --- |
| 27 | 1.4 | **Leased Line** | 1500e% | 2019-08-26 | 2019-09-16 |  |  |  |
| 28 | 1.4.1 | LL Contract Creation on BSCS | 300e% | 2019-08-26 | 2019-08-28 |  |  | RHA |
| 29 | 1.4.2 | LL Subscription | 200e% | 2019-08-29 | 2019-09-03 | 7, 28 | start no earlier than 2019-08-27 | AYZ |
| 30 | 1.4.3 | LL Termination | 100e% | 2019-09-04 | 2019-09-04 | 29 |  | AYZ |
| 31 | 1.4.4 | LL Last Mile Change | 100e% | 2019-09-09 | 2019-09-09 | 30 | start no earlier than 2019-09-09 | AYZ |
| 32 | 1.4.5 | Test Leased Line | 300e% | 2019-09-10 | 2019-09-12 | 31 |  | AYZ |
| 33 | 1.4.6 | Deliver LL in a version | 200e% | 2019-09-13 | 2019-09-16 | 32 |  | MIS |
| 34 | 1.5 | **Billing** | 1300e% | 2019-09-04 | 2019-09-20 |  |  |  |
| 35 | 1.5.1 | Implement the BOD as requests simulate and real | 300e% | 2019-09-04 | 2019-09-06 | 15 |  | HMA |
| 36 | 1.5.2 | Invoices | 200e% | 2019-09-09 | 2019-09-10 | 35 |  | MYA |
| 37 | 1.5.3 | Administrative Complaints | 300e% | 2019-09-11 | 2019-09-13 | 36 |  | MYA |
| 38 | 1.5.4 | Akshay to provide us with APIs of installments | 100e% | 2019-09-11 | 2019-09-11 | 36 |  | AKH |
| 39 | 1.5.5 | Rodi to Check the provided APIs and do his testing | 200e% | 2019-09-12 | 2019-09-13 | 38 |  | RHA |
| 40 | 1.5.6 | Implement Installments | 400e% | 2019-09-16 | 2019-09-19 | 39 |  | HMA |
| 41 | 1.5.7 | Implement Payment Arrangement | 300e% | 2019-09-16 | 2019-09-18 | 37 |  | MYA |
| 42 | 1.5.8 | Check Payments and Credit Notes | 200e% | 2019-09-19 | 2019-09-20 | 41 |  | MYA |
| 43 | 1.6 | **Account** | 2000e% | 2019-09-11 | 2019-10-08 |  |  |  |
| 44 | 1.6.1 | Data Model from E | 100e% | 2019-09-11 | 2019-09-11 |  | start no earlier than 2019-09-11 |  |
| 45 | 1.6.2 | Account File Creation | 200e% | 2019-09-19 | 2019-09-20 | 25, 44 |  | MAB |
| 46 | 1.6.3 | Account File Management | 100e% | 2019-09-23 | 2019-09-23 | 45 |  | MAB |
| 47 | 1.6.4 | Account File Requests | 200e% | 2019-09-26 | 2019-09-27 | 46 | start no earlier than 2019-09-26 | MAB |
| 48 | 1.6.5 | Changes on Contract Details | 200e% | 2019-09-30 | 2019-10-01 | 47 |  | MAB |
| 49 | 1.6.6 | Testing for All Requests on Account | 300e% | 2019-10-02 | 2019-10-04 | 48 |  | MAB |
| 50 | 1.6.7 | Deliver Account in a version | 200e% | 2019-10-07 | 2019-10-08 | 49 |  | MIS |

| ID | WBS | Task | Duration | Start | Finish | Predecessors | Constraint | Resources |
| --- | --- | --- | --- | --- | --- | --- | --- | --- |
| 51 | 1.7 | **Work Orders** | 1200e% | 2019-09-10 | 2019-09-25 |  |  |  |
| 52 | 1.7.1 | Implement Site for Work Orders | 100e% | 2019-09-13 | 2019-09-13 | 32 |  | AYZ |
| 53 | 1.7.2 | Work orders diagrams from Ali Younes | 100e% | 2019-09-10 | 2019-09-10 |  | start no earlier than 2019-09-10 | AYO |
| 54 | 1.7.3 | Implement Work Orders for Tel | 300e% | 2019-09-11 | 2019-09-13 | 53 |  | AYZ |
| 55 | 1.7.4 | Implement Work Orders for XDSL | 300e% | 2019-09-16 | 2019-09-18 | 54 |  | AYZ |
| 56 | 1.7.5 | Implement Work Orders for LL | 300e% | 2019-09-19 | 2019-09-23 | 55 |  | AYZ |
| 57 | 1.7.6 | Delivery work orders in a version | 200e% | 2019-09-24 | 2019-09-25 | 56 |  | MIS |
| 58 | 1.8 | **Print Templates** | 1700e% | 2019-09-13 | 2019-10-07 |  |  |  |
| 59 | 1.8.1 | Templates from Fidaa | 100e% | 2019-09-13 | 2019-09-13 |  | start no earlier than 2019-09-13 | FAB |
| 60 | 1.8.2 | Templates for Tel | 300e% | 2019-09-23 | 2019-09-25 | 42 |  | MYA |
| 61 | 1.8.3 | Templates for XDSL | 200e% | 2019-09-26 | 2019-09-27 | 60 |  | MYA |
| 62 | 1.8.4 | Templates for LL | 200e% | 2019-09-30 | 2019-10-01 | 61 |  | MYA |
| 63 | 1.8.5 | Templates for Ticketing | 200e% | 2019-10-02 | 2019-10-03 | 62 |  |  |
| 64 | 1.8.6 | Deliver templates in a version | 200e% | 2019-10-04 | 2019-10-07 | 63 |  | MIS |
| 65 | 1.9 | **Access Rights** | 3200e% | 2019-09-13 | 2019-10-28 |  |  |  |
| 66 | 1.9.1 | Analysis part for every action | 200e% | 2019-09-13 | 2019-09-16 |  | start no earlier than 2019-09-13 | MIS |
| 67 | 1.9.2 | Permissions on the level of Contracts | 200e% | 2019-10-02 | 2019-10-03 | 62 |  | MYA |
| 68 | 1.9.3 | CRUD permissions for Customer and Account Files | 100e% | 2019-10-04 | 2019-10-04 | 67 |  | MYA |
| 69 | 1.9.4 | Check if Read is prevented programatically nothing is afected | 100e% | 2019-10-07 | 2019-10-07 | 68 |  | MYA |
| 70 | 1.9.5 | Filter Work Orders per teams | 200e% | 2019-10-08 | 2019-10-09 | 69 |  | MYA |
| 71 | 1.9.6 | Security on Billing Tab in Customer and Account Files | 100e% | 2019-10-10 | 2019-10-10 | 70 | start no earlier than 2019-10-10 | MYA |
| 72 | 1.9.7 | Security on grids and custom fields in contract details (billing related) | 100e% | 2019-10-11 | 2019-10-11 | 71 |  | MYA |
| 73 | 1.9.8 | Secuity on Actions in customer file and contract details | 200e% | 2019-10-14 | 2019-10-15 | 72 |  | MYA |
| 74 | 1.9.9 | Catalog for Call Center (specify services and Roles) | 200e% | 2019-10-17 | 2019-10-18 | 73 | start no earlier than 2019-10-17 | MYA |
| 75 | 1.9.10 | Security on Payment Step (cash - invoice) | 100e% | 2019-10-21 | 2019-10-21 | 74 |  | MYA |
| 76 | 1.9.11 | Hide built in functionalities that are not ST related | 200e% | 2019-10-22 | 2019-10-23 | 75 |  | MYA |
| 77 | 1.9.12 | Deliver Access Rights in a version | 300e% | 2019-10-24 | 2019-10-28 | 76 |  | MIS |

Notes:
- 67: Not to show VIP conracts to teams that are not VIP
- 70: This is to be allowed for technical teams and for approval team For record filtering we can do it as follow: Get the logged in user and get the roles in it Get the list of switches of these roles from work order catalog Filter the data back if they are in these roles As for switches if the search criteria is null then exclude it from search

| ID | WBS | Task | Duration | Start | Finish | Predecessors | Constraint | Resources |
| --- | --- | --- | --- | --- | --- | --- | --- | --- |
| 78 | 1.10 | **Waiting List** | 700e% | 2019-09-24 | 2019-10-02 |  |  |  |
| 79 | 1.10.1 | Waiting List Pool | 100e% | 2019-09-24 | 2019-09-24 | 56 |  | AYZ |
| 80 | 1.10.2 | Changes in Requests | 100e% | 2019-09-27 | 2019-09-27 | 79 | start no earlier than 2019-09-27 | AYZ |
| 81 | 1.10.3 | 45 days feature | 300e% | 2019-09-30 | 2019-10-02 | 80 |  | AYZ |
| 82 | 1.11 | **Ticketing** | 2200e% | 2019-09-16 | 2019-10-15 |  |  |  |
| 83 | 1.11.1 | Review and notes for ticketing field from E | 100e% | 2019-09-16 | 2019-09-16 | 37 |  | FAB |
| 84 | 1.11.2 | Technical Complaint Changes | 100e% | 2019-10-07 | 2019-10-07 | 49, 83 |  | MAB |
| 85 | 1.11.3 | Administrative Complaints Changes | 100e% | 2019-10-10 | 2019-10-10 | 84 | start no earlier than 2019-10-10 | MAB |
| 86 | 1.11.4 | Ticketing Grid | 300e% | 2019-10-11 | 2019-10-15 | 85 |  | MAB |
| 87 | 1.12 | **Directory Inquiry** | 1400e% | 2019-09-18 | 2019-10-07 |  |  |  |
| 88 | 1.12.1 | Akshay to provide NK APIs for DN | 100e% | 2019-09-18 | 2019-09-18 |  | start no earlier than 2019-09-18 | AKH |
| 89 | 1.12.2 | Analysis stage | 200e% | 2019-09-20 | 2019-09-23 | 40, 88 | start no earlier than 2019-09-19 | MIS |
| 90 | 1.12.3 | Implement Catalog for Directory Inquiry | 100e% | 2019-09-24 | 2019-09-24 | 89 |  | HMA |
| 91 | 1.12.4 | Public Directory Inquiry | 200e% | 2019-09-25 | 2019-09-26 | 90 |  | HMA |
| 92 | 1.12.5 | Professional Directory Inquiry | 200e% | 2019-09-27 | 2019-09-30 | 91 |  | HMA |
| 93 | 1.12.6 | Search public directory inquiry | 200e% | 2019-10-01 | 2019-10-02 | 92 |  | HMA |
| 94 | 1.12.7 | Search professional direclty inquiry | 100e% | 2019-10-03 | 2019-10-03 | 93 |  | HMA |
| 95 | 1.12.8 | Delivery and testing | 200e% | 2019-10-04 | 2019-10-07 | 94 |  | MIS |
| 96 | 1.13 | **CTI** | 1100e% | 2019-10-02 | 2019-10-16 |  |  |  |
| 97 | 1.13.1 | Investigation with Nabil | 100e% | 2019-10-02 | 2019-10-02 |  | start no earlier than 2019-10-02 | MIS |
| 98 | 1.13.2 | Analysis part | 300e% | 2019-10-03 | 2019-10-07 | 97 |  | MIS |
| 99 | 1.13.3 | Impelemntation in CRM | 700e% | 2019-10-08 | 2019-10-16 | 81, 98 |  | AYZ |
| 100 | 1.14 | **Catalog & Settings** | 200e% | 2019-10-08 | 2019-10-09 |  |  |  |
| 101 | 1.14.1 | Update the catalog of packages to retreive the packages from BSCS | 200e% | 2019-10-08 | 2019-10-09 | 95 |  | HMA |

| ID | WBS | Task | Duration | Start | Finish | Predecessors | Constraint | Resources |
| --- | --- | --- | --- | --- | --- | --- | --- | --- |
| 102 | 1.15 | **SOM** | 900e% | 2019-09-11 | 2019-09-23 |  |  |  |
| 103 | 1.15.1 | Make sure Dunning Processes are working correctly | 100e% | 2019-09-11 | 2019-09-11 |  | start no earlier than 2019-09-11 | RHA |
| 104 | 1.15.2 | Create implicit Requests for SOM Orders | 200e% | 2019-09-12 | 2019-09-13 | 103 |  | RHA |
| 105 | 1.15.3 | Prepare work orders for EDA | 200e% | 2019-09-16 | 2019-09-17 | 104 |  | RHA |
| 106 | 1.15.4 | Logging requests and Workflows | 200e% | 2019-09-18 | 2019-09-19 | 105 |  | RHA |
| 107 | 1.15.5 | Bulk Actions | 200e% | 2019-09-20 | 2019-09-23 | 106 |  | RHA |
| 108 | 1.16 | **Reporting** | 4900e% | 2019-09-11 | 2019-11-18 |  |  |  |
| 109 | 1.16.1 | Analysis and decision on Dev Express | 300e% | 2019-09-11 | 2019-09-13 |  | start no earlier than 2019-09-11 | ZMO |
| 110 | 1.16.2 | Analysis for all Reports | 200e% | 2019-09-16 | 2019-09-17 | 109 |  | MIS |
| 111 | 1.16.3 | Subscription Reports | 300e% | 2019-10-24 | 2019-10-28 | 76, 110 |  | MYA |
| 112 | 1.16.4 | Complaints Reports | 200e% | 2019-10-29 | 2019-10-30 | 111 |  | MYA |
| 113 | 1.16.5 | Operations Reports | 200e% | 2019-10-31 | 2019-11-01 | 112 |  | MYA |
| 114 | 1.16.6 | Suspension Reports | 200e% | 2019-11-04 | 2019-11-05 | 113 |  | MYA |
| 115 | 1.16.7 | Waiting Lists Reports | 200e% | 2019-11-06 | 2019-11-07 | 114 |  | MYA |
| 116 | 1.16.8 | ADSL Reports | 200e% | 2019-11-08 | 2019-11-11 | 115 |  | MYA |
| 117 | 1.16.9 | Change Number Reports | 100e% | 2019-11-12 | 2019-11-12 | 116 |  | MYA |
| 118 | 1.16.10 | Other Reports | 200e% | 2019-11-13 | 2019-11-14 | 117 |  | MYA |
| 119 | 1.16.11 | Deliver Reporting in a version | 200e% | 2019-11-15 | 2019-11-18 | 118 |  | MYA |
| 120 | 1.17 | **Localization** | 2100e% | 2019-09-24 | 2019-10-22 |  |  |  |
| 121 | 1.17.1 | Update all messages to have keys | 100e% | 2019-10-01 | 2019-10-01 |  | start no earlier than 2019-10-01 | HMA |
| 122 | 1.17.2 | Update messages text after review with Fidaa | 300e% | 2019-10-02 | 2019-10-04 | 121 |  | FAB |
| 123 | 1.17.3 | Prepare the sheet to send to ST | 200e% | 2019-09-24 | 2019-09-25 | 107 |  | RHA |
| 124 | 1.17.4 | E/// to translate | 300e% | 2019-09-26 | 2019-09-30 | 123 |  | FAB |
| 125 | 1.17.5 | Import translation into BPM | 100e% | 2019-10-16 | 2019-10-16 | 86, 124 |  | MAB |
| 126 | 1.17.6 | Testing localization - Dev test | 200e% | 2019-10-17 | 2019-10-18 | 125 |  | MIS |
| 127 | 1.17.7 | Deliver Localization in a version | 200e% | 2019-10-21 | 2019-10-22 | 126 |  | MIS |
